# KJ915矿用车辆管理系统管理计划

Schedule from MS Project, 2014-07-28 to 2014-09-30, A marks actual dates.
南京北路自动化系统有限责任公司

## Calendars

- 标准: Mon-Fri 08:00-12:00, 13:00-17:00; Sat-Sun off.

## Resources

| Resource |
| --- |
| 周国祥 |
| 赵黄建 |
| 李圣渠 |
| 周燕 |
| 朱元强 |
| 袁加富 |
| 王亚南 |
| 黄艳红 |
| 王飞 |
| 吴晓芳 |
| 项目组全体 |
| 金勇 |
| 于胜利 |
| 段文斌 |

## Schedule

| ID | WBS | Task | Type | Duration | Start | Finish | Predecessors | Complete | Remaining | Total slack | Free slack | Constraint | Resources | Work | Actual work |
| --- | --- | --- | --- | --- | --- | --- | --- | --- | --- | --- | --- | --- | --- | --- | --- |
| 1 | 1 | **软件系统设计** |  | 12d | 2014-07-28 A | 2014-08-13 |  | 99% | 0d | 34d |  |  |  | 104h | 104h |
| 2 | 1.1 | 详细设计 |  | 7d | 2014-07-28 A | 2014-08-05 A |  | 100% |  |  |  |  | 李圣渠 | 56h | 56h |
| 3 | 1.2 | 审阅详细设计文档 |  | 1d | 2014-08-06 A | 2014-08-06 A | 2 | 100% |  |  |  |  | 李圣渠 | 8h | 8h |
| 4 | 1.3 | 根据评审意见修改 |  | 1d | 2014-08-07 A | 2014-08-07 A | 3 | 100% |  |  |  |  | 李圣渠 | 8h | 8h |
| 5 | 1.4 | 完成详细设计 | milestone | 0d | 2014-08-07 A | 2014-08-07 A |  | 100% |  |  |  | start no earlier than 2014-08-07 | 项目组全体 |  |  |
| 6 | 1.5 | 主界面框架设计 |  | 4d | 2014-08-07 A | 2014-08-12 A | 5, 88 | 100% |  |  |  |  | 李圣渠 | 32h | 32h |
| 7 | 1.6 | 完成主框架 | milestone | 0d | 2014-08-13 | 2014-08-13 |  |  |  | 34d | 0d | start no earlier than 2014-08-13 | 李圣渠 |  |  |
| 8 | 2 | **软件开发** |  | 35d | 2014-08-13 A | 2014-09-30 |  | 41% | 20.63d | 0d |  |  |  | 976h | 430.4h |
| 9 | 2.1 | **服务器** |  | 35d | 2014-08-13 A | 2014-09-30 |  | 57% | 15.17d | 0d |  |  |  | 216h | 163.2h |
| 10 | 2.1.1 | 用户登录管理 |  | 3d | 2014-08-13 A | 2014-08-15 A | 6 | 100% |  |  |  |  | 李圣渠 | 24h | 24h |
| 11 | 2.1.2 | 与PC客户端通信 |  | 5d | 2014-08-18 A | 2014-08-22 | 10 | 80% | 1d | 21.4d | 0d |  | 李圣渠 | 40h | 32h |
| 12 | 2.1.3 | 与PDA通讯 |  | 4d | 2014-08-25 A | 2014-08-28 | 11 | 80% | 0.8d | 18.2d | 0d |  | 李圣渠 | 32h | 25.6h |
| 13 | 2.1.4 | 数据处理 |  | 4d | 2014-08-29 A | 2014-09-03 | 12 | 80% | 0.8d | 15d | 0d |  | 李圣渠 | 32h | 25.6h |
| 14 | 2.1.5 | 基本运输环节处理及告警处理 |  | 5d | 2014-09-04 A | 2014-09-10 | 13 | 80% | 1d | 11d | 0d |  | 李圣渠 | 40h | 32h |
| 15 | 2.1.6 | 完成运输基本环节验证的条件 | milestone | 0d | 2014-09-10 | 2014-09-10 |  |  |  | 15d |  | start no earlier than 2014-09-10 | 金勇; 于胜利; 段文斌; 项目组全体 |  |  |
| 16 | 2.1.7 | 其他运输流程管理 |  | 6d | 2014-09-11 A | 2014-09-18 | 14 | 50% | 3d | 8d |  |  | 李圣渠 | 48h | 24h |
| 17 | 2.1.8 | 完成代码编写 | milestone | 0d | 2014-09-18 | 2014-09-18 |  |  |  | 0d |  | start no earlier than 2014-09-18 | 李圣渠 |  |  |
| 18 | 2.1.9 | 根据测试反馈修改代码 |  | 9d | 2014-09-18 | 2014-09-30 | 17 |  |  | 0d |  |  |  |  |  |
| 19 | 2.2 | **PC客户端** |  | 35d | 2014-08-13 A | 2014-09-30 |  | 47% | 18.51d | 0d |  |  |  | 472h | 222.4h |
| 20 | 2.2.1 | **基础信息管理** |  | 16d | 2014-08-13 A | 2014-09-04 |  | 88% | 1.88d | 15d |  |  |  | 136h | 120h |
| 21 | 2.2.1.1 | 人员管理 |  | 1d | 2014-08-13 A | 2014-08-13 A | 7 | 100% |  |  |  |  | 袁加富 | 8h | 8h |
| 22 | 2.2.1.2 | 部门管理 |  | 1d | 2014-08-14 A | 2014-08-14 A | 21 | 100% |  |  |  |  | 袁加富 | 8h | 8h |
| 23 | 2.2.1.3 | 地点管理 |  | 1d | 2014-08-15 A | 2014-08-15 A | 22 | 100% |  |  |  |  | 袁加富 | 8h | 8h |
| 24 | 2.2.1.4 | **车辆信息管理** |  | 4d | 2014-08-18 A | 2014-08-21 A |  | 100% |  |  |  |  |  | 32h | 32h |
| 25 | 2.2.1.4.1 | 车辆类型管理 |  | 1d | 2014-08-18 A | 2014-08-18 A | 23 | 100% |  |  |  |  | 袁加富 | 8h | 8h |
| 26 | 2.2.1.4.2 | 车辆管理 |  | 1d | 2014-08-19 A | 2014-08-19 A | 25 | 100% |  |  |  |  | 袁加富 | 8h | 8h |
| 27 | 2.2.1.4.3 | 车辆维护管理 |  | 1d | 2014-08-20 A | 2014-08-20 A | 26 | 100% |  |  |  |  | 袁加富 | 8h | 8h |
| 28 | 2.2.1.4.4 | 车辆报废管理 |  | 1d | 2014-08-21 A | 2014-08-21 A | 27 | 100% |  |  |  |  | 袁加富 | 8h | 8h |
| 29 | 2.2.1.5 | 区域管理 |  | 1d | 2014-08-22 A | 2014-08-22 A | 28 | 100% |  |  |  |  | 袁加富 | 8h | 8h |
| 30 | 2.2.1.6 | PDA管理 |  | 1d | 2014-08-25 A | 2014-08-25 A | 29 | 100% |  |  |  |  | 袁加富 | 8h | 8h |
| 31 | 2.2.1.7 | 卡管理 |  | 1d | 2014-08-26 A | 2014-08-26 A | 30 | 100% |  |  |  |  | 袁加富 | 8h | 8h |
| 32 | 2.2.1.8 | 物料类型管理 |  | 1d | 2014-08-27 A | 2014-08-27 A | 31 | 100% |  |  |  |  | 袁加富 | 8h | 8h |
| 33 | 2.2.1.9 | 奖惩管理 |  | 2d | 2014-08-28 | 2014-08-29 | 32 |  |  | 16d | 2d |  | 袁加富 | 16h |  |
| 34 | 2.2.1.10 | 完成基础信息配置，提交版本 | milestone | 0d | 2014-09-04 | 2014-09-04 | 33 |  |  | 15d | 0d | start no earlier than 2014-09-04 | 袁加富 |  |  |
| 35 | 2.2.1.11 | 基站管理 |  | 1d | 2014-08-13 A | 2014-08-13 A | 6 | 100% |  |  |  |  | 袁加富 | 8h | 8h |
| 36 | 2.2.1.12 | WIFI基站管理 |  | 1d | 2014-08-14 A | 2014-08-14 A | 35 | 100% |  |  |  |  | 周燕 | 8h | 8h |
| 37 | 2.2.1.13 | 角色管理 |  | 1d | 2014-08-15 A | 2014-08-15 A | 36 | 100% |  |  |  |  | 袁加富 | 8h | 8h |
| 38 | 2.2.1.14 | 用户管理 |  | 1d | 2014-08-18 A | 2014-08-18 A | 37 | 100% |  |  |  |  | 袁加富 | 8h | 8h |

| ID | WBS | Task | Type | Duration | Start | Finish | Predecessors | Complete | Remaining | Total slack | Free slack | Constraint | Resources | Work | Actual work |
| --- | --- | --- | --- | --- | --- | --- | --- | --- | --- | --- | --- | --- | --- | --- | --- |
| 39 | 2.2.2 | **系统设置** |  | 11d | 2014-08-19 A | 2014-09-02 A |  | 100% |  |  |  |  |  | 32h | 32h |
| 40 | 2.2.2.1 | 密码修改 |  | 1d | 2014-09-01 A | 2014-09-01 A | 33 | 100% |  |  |  |  | 袁加富 | 8h | 8h |
| 41 | 2.2.2.2 | 操作日志查询 |  | 1d | 2014-09-02 A | 2014-09-02 A | 40 | 100% |  |  |  |  | 袁加富 | 8h | 8h |
| 42 | 2.2.2.3 | 各种告警阀值设置 |  | 2d | 2014-08-19 A | 2014-08-20 A | 38 | 100% |  |  |  |  | 袁加富 | 16h | 16h |
| 43 | 2.2.3 | **GIS地图** |  | 18d | 2014-08-21 | 2014-09-15 |  |  |  | 11d |  |  |  | 64h |  |
| 44 | 2.2.3.1 | 车辆状态显示、设备显示 |  | 2d | 2014-08-21 | 2014-08-22 | 42 |  |  | 15d | 0d |  | 周燕 | 16h |  |
| 45 | 2.2.3.2 | 车辆列表显示 |  | 1d | 2014-08-25 | 2014-08-25 | 44 |  |  | 15d | 0d |  | 周燕 | 8h |  |
| 46 | 2.2.3.3 | 地图导入导出 |  | 1d | 2014-08-26 | 2014-08-26 | 45 |  |  | 15d | 0d |  | 周燕 | 8h |  |
| 47 | 2.2.3.4 | 历史轨迹回放 |  | 4d | 2014-09-10 | 2014-09-15 | 57 |  |  | 11d |  |  | 周燕 | 32h |  |
| 48 | 2.2.4 | **物料运输管理** |  | 10d | 2014-08-27 A | 2014-09-10 |  | 58% | 4.2d | 11d |  |  |  | 80h | 46.4h |
| 49 | 2.2.4.1 | 申请 |  | 2d | 2014-08-27 A | 2014-08-28 | 46 | 90% | 0.2d | 13.2d | 0d |  | 周燕 | 16h | 14.4h |
| 50 | 2.2.4.2 | 审核 |  | 2d | 2014-08-29 A | 2014-09-01 | 49 | 80% | 0.4d | 11.6d | 0d |  | 周燕 | 16h | 12.8h |
| 51 | 2.2.4.3 | 供车 |  | 1d | 2014-09-02 A | 2014-09-02 | 50 | 80% | 0.2d | 10.8d | 0d |  | 周燕 | 8h | 6.4h |
| 52 | 2.2.4.4 | 装车 |  | 1d | 2014-09-03 A | 2014-09-03 | 51 | 80% | 0.2d | 10d | 0d |  | 周燕 | 8h | 6.4h |
| 53 | 2.2.4.5 | 交接车 |  | 1d | 2014-09-04 A | 2014-09-04 | 52 | 80% | 0.2d | 10d | 0d |  | 周燕 | 8h | 6.4h |
| 54 | 2.2.4.6 | 接货 |  | 1d | 2014-09-05 | 2014-09-05 | 53 |  |  | 10d | 0d |  | 周燕 | 8h |  |
| 55 | 2.2.4.7 | 卸货 |  | 1d | 2014-09-08 | 2014-09-08 | 54 |  |  | 10d | 0d |  | 周燕 | 8h |  |
| 56 | 2.2.4.8 | 模块动态配置 |  | 1d | 2014-09-09 | 2014-09-09 | 55 |  |  | 10d | 0d |  | 周燕 | 8h |  |
| 57 | 2.2.4.9 | 完成（装车卸车）的基本功能 | milestone | 0d | 2014-09-10 | 2014-09-10 |  |  |  | 11d | 0d | start no earlier than 2014-09-10 |  |  |  |
| 58 | 2.2.5 | **告警查询** |  | 3d | 2014-09-16 A | 2014-09-18 |  | 99% | 0d | 0d |  |  |  | 24h | 24h |
| 59 | 2.2.5.1 | 各种告警提示与查询 |  | 2d | 2014-09-16 A | 2014-09-17 A | 47 | 100% |  |  |  |  | 袁加富 | 16h | 16h |
| 60 | 2.2.5.2 | 系统消息查询 |  | 1d | 2014-09-18 A | 2014-09-18 A | 59 | 100% |  |  |  |  | 袁加富 | 8h | 8h |
| 61 | 2.2.5.3 | 完成代码编写 | milestone | 0d | 2014-09-18 | 2014-09-18 |  |  |  | 0d |  | start no earlier than 2014-09-18 | 袁加富 |  |  |
| 62 | 2.2.6 | **整体调试** |  | 9d | 2014-09-18 | 2014-09-30 |  |  |  | 0d |  |  |  | 88h |  |
| 63 | 2.2.6.1 | 界面美化 |  | 3d | 2014-09-18 | 2014-09-22 | 61 |  |  | 0d |  |  | 周燕 | 24h |  |
| 64 | 2.2.6.2 | 根据测试反馈修改代码 |  | 8d | 2014-09-19 | 2014-09-30 | 63FS-2d |  |  | 0d |  |  | 周燕 | 64h |  |

Notes:
- 57: 关键节点

| ID | WBS | Task | Type | Duration | Start | Finish | Predecessors | Complete | Remaining | Total slack | Free slack | Constraint | Resources | Work | Actual work |
| --- | --- | --- | --- | --- | --- | --- | --- | --- | --- | --- | --- | --- | --- | --- | --- |
| 65 | 2.2.7 | **统计分析** |  | 6d | 2014-09-03 | 2014-09-10 | 41 |  |  | 14d |  |  |  | 48h |  |
| 66 | 2.2.7.1 | 车辆使用月报表 |  | 2d | 2014-09-03 | 2014-09-04 | 33 |  |  | 14d | 0d |  | 袁加富 | 16h |  |
| 67 | 2.2.7.2 | 车辆闲置月报表 |  | 2d | 2014-09-05 | 2014-09-08 | 66 |  |  | 14d | 0d |  | 袁加富 | 16h |  |
| 68 | 2.2.7.3 | 物料使用报表 |  | 2d | 2014-09-09 | 2014-09-10 | 67 |  |  | 14d |  |  | 袁加富 | 16h |  |
| 69 | 2.3 | **PDA客户端** |  | 35d | 2014-08-13 A | 2014-09-30 |  | 16% | 29.56d | 0d |  |  |  | 288h | 44.8h |
| 70 | 2.3.1 | slash界面 |  | 1d | 2014-08-13 | 2014-08-13 | 7, 6 |  |  | 34d |  |  | 朱元强 | 8h |  |
| 71 | 2.3.2 | Socket 数据交互 |  | 1d | 2014-08-14 A | 2014-08-14 A | 70 | 100% |  |  |  |  | 朱元强 | 8h | 8h |
| 72 | 2.3.3 | 数据解析，Service类 |  | 2d | 2014-08-15 A | 2014-08-18 A | 71 | 100% |  |  |  |  | 朱元强 | 16h | 16h |
| 73 | 2.3.4 | UI布局，控件实现 |  | 6d | 2014-08-19 A | 2014-08-26 | 72 | 30% | 4.2d | 14.8d | 0d |  | 朱元强 | 48h | 14.4h |
| 74 | 2.3.5 | 大数据分页 |  | 1d | 2014-08-27 | 2014-08-27 | 73 |  |  | 14.8d | 0d |  | 朱元强 | 8h |  |
| 75 | 2.3.6 | 装卸货 |  | 5d | 2014-08-28 | 2014-09-03 | 74 |  |  | 14.8d | 0d |  | 朱元强 | 40h |  |
| 76 | 2.3.7 | 其他运输环节处理 |  | 3d | 2014-09-04 | 2014-09-08 | 75 |  |  | 14.8d | 0d |  | 朱元强 | 24h |  |
| 77 | 2.3.8 | 离线缓存 |  | 2d | 2014-09-09 A | 2014-09-10 | 76 | 40% | 1.2d | 14d |  |  | 朱元强 | 16h | 6.4h |
| 78 | 2.3.9 | 完成装卸货功能 | milestone | 0d | 2014-09-10 | 2014-09-10 |  |  |  | 0d |  | start no earlier than 2014-09-10 | 朱元强 |  |  |
| 79 | 2.3.10 | 根据测试反馈修改 |  | 3d | 2014-09-10 | 2014-09-12 | 78 |  |  | 0d |  |  | 朱元强 | 24h |  |
| 80 | 2.3.11 | 车辆分布，货物位置，车辆信息等查询操作 |  | 4d | 2014-09-15 | 2014-09-18 | 79 |  |  | 0d |  |  | 朱元强 | 32h |  |
| 81 | 2.3.12 | 完成代码编写 | milestone | 0d | 2014-09-18 | 2014-09-18 |  |  |  | 9d |  | start no earlier than 2014-09-18 | 朱元强 |  |  |
| 82 | 2.3.13 | 界面美化 |  | 2d | 2014-09-19 | 2014-09-22 | 80 |  |  | 0d |  |  | 朱元强 | 16h |  |
| 83 | 2.3.14 | 根据测试反馈修改代码 |  | 6d | 2014-09-23 | 2014-09-30 | 82 |  |  | 0d |  |  | 朱元强 | 48h |  |
| 84 | 3 | **UI设计** |  | 38d | 2014-07-28 A | 2014-09-18 |  | 54% | 17.5d | 9d |  |  |  | 344h | 204h |
| 85 | 3.1 | 主界面布局草图 |  | 6d | 2014-07-28 A | 2014-08-04 A |  | 100% |  |  |  |  | 吴晓芳 | 48h | 48h |
| 86 | 3.2 | 审阅主界面布局草图 |  | 1d | 2014-08-05 A | 2014-08-05 A | 85 | 100% |  |  |  |  | 王飞; 李圣渠; 赵黄建; 周燕; 袁加富; 朱元强 | 48h | 48h |
| 87 | 3.3 | 根据评审结果修改 |  | 1d | 2014-08-06 A | 2014-08-06 A | 86 | 100% |  |  |  |  | 吴晓芳 | 8h | 8h |
| 88 | 3.4 | 完成主界面布局设计 | milestone | 0d | 2014-08-07 | 2014-08-07 |  |  |  | 39d |  | start no earlier than 2014-08-07 | 吴晓芳 |  |  |
| 89 | 3.5 | 整体UI风格设计 |  | 25d | 2014-08-07 A | 2014-09-10 | 87 | 50% | 12.5d | 9d | 0d |  | 吴晓芳 | 200h | 100h |
| 90 | 3.6 | 评审界面UI设计 |  | 1d | 2014-09-11 | 2014-09-11 | 89 |  |  | 9d | 0d |  | 吴晓芳 | 8h |  |
| 91 | 3.7 | 根据评审结果修改 |  | 4d | 2014-09-12 | 2014-09-17 | 90 |  |  | 9d | 0d |  | 吴晓芳 | 32h |  |
| 92 | 3.8 | 完成整体UI设计 | milestone | 0d | 2014-09-18 | 2014-09-18 | 91 |  |  | 9d |  | start no earlier than 2014-09-18 | 吴晓芳 |  |  |

Notes:
- 88: 里程碑

| ID | WBS | Task | Type | Duration | Start | Finish | Predecessors | Complete | Remaining | Total slack | Constraint | Resources | Work | Actual work |
| --- | --- | --- | --- | --- | --- | --- | --- | --- | --- | --- | --- | --- | --- | --- |
| 93 | 4 | **测试** |  | 33d | 2014-08-14 A | 2014-09-30 |  | 52% | 15.97d | 1d |  |  | 496h | 256h |
| 94 | 4.1 | 搭建测试环境 |  | 16d | 2014-08-14 A | 2014-09-05 A | 95SF | 100% |  |  |  | 黄艳红; 王亚南 | 256h | 256h |
| 95 | 4.2 | 基础数据版测试 |  | 3d | 2014-09-05 | 2014-09-09 | 34FS+1d |  |  | 15d |  | 黄艳红; 王亚南 | 48h |  |
| 96 | 4.3 | 基本版测试 |  | 5d | 2014-09-10 | 2014-09-16 | 56 |  |  | 10d |  | 黄艳红; 王亚南 | 80h |  |
| 97 | 4.4 | 完整版测试 |  | 7d | 2014-09-19 | 2014-09-29 | 61FS+1d |  |  | 1d |  | 黄艳红; 王亚南 | 112h |  |
| 98 | 4.5 | 版本发布 | milestone | 0d | 2014-09-30 | 2014-09-30 |  |  |  | 1d | start no earlier than 2014-09-30 | 黄艳红; 王亚南 |  |  |
