# KJ915矿用车辆管理系统管理计划(变更)

Schedule from MS Project, 2014-09-16 to 2014-10-30.
南京北路自动化系统有限责任公司

## Calendars

- 标准: Mon-Fri 08:00-12:00, 13:00-17:00; Sat-Sun off. Exceptions (off unless hours are given): 2014-09-28 08:00-12:00, 13:00-17:00.

## Resources

| Resource |
| --- |
| 周国祥 |
| 赵黄建 |
| 李圣渠 |
| 周燕 |
| 袁加富 |
| 王亚南 |
| 黄艳红 |
| 王飞 |
| 吴晓芳 |
| 项目组全体 |
| 金勇 |
| 于胜利 |
| 段文斌 |
| 詹学勇 |

## Schedule

| ID | WBS | Task | Type | Duration | Start | Finish | Predecessors | Total slack | Free slack | Constraint | Resources | Work |
| --- | --- | --- | --- | --- | --- | --- | --- | --- | --- | --- | --- | --- |
| 1 | 1 | **软件开发** |  | 34d | 2014-09-16 | 2014-10-30 |  | 0d |  |  |  | 504h |
| 2 | 1.1 | **服务器** |  | 31d | 2014-09-16 | 2014-10-27 |  | 3d |  |  |  | 152h |
| 3 | 1.1.1 | 完成运输管理模块 |  | 4d | 2014-09-16 | 2014-09-19 |  | 8d | 0d | start no earlier than 2014-09-16 | 李圣渠 | 32h |
| 4 | 1.1.2 | 完成于PC端业务交互处理 |  | 15d | 2014-09-22 | 2014-10-09 | 3 | 13d |  |  | 李圣渠 | 120h |
| 5 | 1.1.3 | 各子系统联合调试 |  | 12d | 2014-10-10 | 2014-10-27 | 4 | 1d |  |  |  |  |
| 6 | 1.2 | **PC客户端** |  | 24d | 2014-09-16 | 2014-10-16 |  | 10d |  |  |  | 216h |
| 7 | 1.2.1 | 批量放号 |  | 1d | 2014-09-16 | 2014-09-16 |  | 21d | 0d | start no earlier than 2014-09-16 | 袁加富 | 8h |
| 8 | 1.2.2 | 手动导入基站，编辑基站信息 |  | 2d | 2014-09-17 | 2014-09-18 | 7 | 21d | 0d |  | 袁加富 | 16h |
| 9 | 1.2.3 | 当前告警 |  | 1d | 2014-09-19 | 2014-09-19 | 8 | 21d | 0d |  | 袁加富 | 8h |
| 10 | 1.2.4 | 其他类型告警 |  | 1d | 2014-09-22 | 2014-09-22 | 9 | 21d | 0d |  | 袁加富 | 8h |
| 11 | 1.2.5 | 车辆使用月报表 |  | 1d | 2014-09-23 | 2014-09-23 | 10 | 21d | 0d |  | 袁加富 | 8h |
| 12 | 1.2.6 | 车辆闲置月报表 |  | 1d | 2014-09-24 | 2014-09-24 | 11 | 21d | 0d |  | 袁加富 | 8h |
| 13 | 1.2.7 | 物料运输报表 |  | 1d | 2014-09-25 | 2014-09-25 | 12 | 21d | 0d |  | 袁加富 | 8h |
| 14 | 1.2.8 | 车辆维护报表 |  | 1d | 2014-09-26 | 2014-09-26 | 13 | 21d | 0d |  | 袁加富 | 8h |
| 15 | 1.2.9 | 自测、功能优化 |  | 2d | 2014-09-28 | 2014-09-29 | 14 | 21d |  |  | 袁加富 | 16h |
| 16 | 1.2.10 | 运输过程管理 |  | 7d | 2014-09-16 | 2014-09-24 |  | 20d | 0d | start no earlier than 2014-09-16 | 周燕 | 56h |
| 17 | 1.2.11 | 运输过程、当前状态查询 |  | 2d | 2014-09-25 | 2014-09-26 | 16 | 20d | 0d | start no earlier than 2014-09-15 | 周燕 | 16h |
| 18 | 1.2.12 | 完成运输管理模块 | milestone | 0d | 2014-09-26 | 2014-09-26 | 17 | 20d | 0d |  | 周燕 |  |
| 19 | 1.2.13 | GIS地图开发1 |  | 3d | 2014-09-28 | 2014-09-30 | 18 | 20d |  | start no earlier than 2014-09-28 | 周燕 | 24h |
| 20 | 1.2.14 | GIS地图开发2 |  | 3d | 2014-10-08 | 2014-10-10 |  | 2d | 0d | start no earlier than 2014-10-08 |  |  |
| 21 | 1.2.15 | 界面优化及美化 |  | 2d | 2014-10-13 | 2014-10-14 | 20, 19 | 2d | 0d | finish no earlier than 2014-10-08 | 周燕 | 16h |
| 22 | 1.2.16 | 自测、功能优化 |  | 2d | 2014-10-15 | 2014-10-16 | 21 | 2d | 0d | start no earlier than 2014-10-08 | 周燕 | 16h |
| 23 | 1.2.17 | 完成功能开发，提交测试版本 | milestone | 0d | 2014-10-16 | 2014-10-16 | 22 | 2d | 0d |  |  |  |
| 24 | 1.3 | **PDA客户端** |  | 34d | 2014-09-16 | 2014-10-30 |  | 0d |  |  |  | 136h |
| 25 | 1.3.1 | 装车 |  | 11d | 2014-09-16 | 2014-09-29 |  | 23d | 0d | start no earlier than 2014-09-16 | 詹学勇 | 88h |
| 26 | 1.3.2 | 其他运输环节1 |  | 1d | 2014-09-30 | 2014-09-30 | 25 | 22d |  |  | 詹学勇 | 8h |
| 27 | 1.3.3 | 其他运输环节2 |  | 12d | 2014-10-08 | 2014-10-23 |  | 0d |  | start no earlier than 2014-10-08 |  |  |
| 28 | 1.3.4 | 车辆位置分布 |  | 1d | 2014-10-24 | 2014-10-24 | 27 | 0d |  | start no earlier than 2014-10-08 | 詹学勇 | 8h |
| 29 | 1.3.5 | 系统设置 |  | 1d | 2014-10-27 | 2014-10-27 | 28 | 0d |  |  | 詹学勇 | 8h |
| 30 | 1.3.6 | 运单查询 |  | 2d | 2014-10-28 | 2014-10-29 | 29 | 0d |  |  | 詹学勇 | 16h |
| 31 | 1.3.7 | 自测发布 |  | 1d | 2014-10-30 | 2014-10-30 | 30 | 0d |  |  | 詹学勇 | 8h |

Notes:
- 4: 减掉十一长假7天

| ID | WBS | Task | Duration | Start | Finish | Predecessors | Total slack | Constraint | Resources | Work |
| --- | --- | --- | --- | --- | --- | --- | --- | --- | --- | --- |
| 32 | 2 | **UI设计** | 11d | 2014-09-16 | 2014-09-29 |  | 23d |  |  | 32h |
| 33 | 2.1 | 完成PC端UI设计 | 4d | 2014-09-16 | 2014-09-19 |  | 31d | start no earlier than 2014-09-16 | 吴晓芳 | 32h |
| 34 | 2.2 | 完成PDA端UI设计 | 11d | 2014-09-16 | 2014-09-29 |  | 24d | start no earlier than 2014-09-16 |  |  |
| 35 | 3 | **测试** | 29d | 2014-09-19 | 2014-10-28 |  | 2d |  |  | 416h |
| 36 | 3.1 | 更新测试用例 | 3d | 2014-09-19 | 2014-09-23 |  | 29d | finish no earlier than 2014-09-23 | 黄艳红; 王亚南 | 48h |
| 37 | 3.2 | PC端运输流程管理版本 | 15d | 2014-09-26 | 2014-10-15 | 38SF | 12d | finish no earlier than 2014-10-15 | 黄艳红; 王亚南 | 240h |
| 38 | 3.3 | PC端完全版本测试 | 8d | 2014-10-17 | 2014-10-28 | 23 | 2d |  | 黄艳红; 王亚南 | 128h |

Notes:
- 37: 扣掉十一长假7天时间
